# DC module返修验证

Schedule from a web Gantt chart, 2026-08-19 to 2026-11-13.
Saturdays and Sundays are off

## Schedule

| ID | WBS | Task | Type | Duration | Start | Finish | Status |
| --- | --- | --- | --- | --- | --- | --- | --- |
| 2 | 1 | **0. SDV rework** | fixed start, fixed end | 14d | 2026-08-19 | 2026-09-07 |  |
| 3 | 1.1 | Plan A: 增加锡重新回流 |  | 1d | 2026-08-19 | 2026-08-19 | failed |
| 4 | 1.2 | Plan B：小锡炉返修 |  | 1d | 2026-08-19 | 2026-08-19 | failed |
| 5 | 1.3 | **Plan C: 波峰焊返修** |  | 11d | 2026-08-24 | 2026-09-07 |  |
| 6 | 1.3.1 | 波峰焊治具评估验证 |  | 7d | 2026-08-24 | 2026-09-01 |  |
| 7 | 1.3.2 | 返修检查出货 |  | 5d | 2026-09-01 | 2026-09-07 |  |
| 8 | 2 | **1. SDV-SIT DC module焊接验证** |  | 60d | 2026-08-24 | 2026-11-13 |  |
| 9 | 2.1 | **Plan A: 波峰焊验证** |  | 60d | 2026-08-24 | 2026-11-13 |  |
| 10 | 2.1.1 | 锡条、无卤助焊剂调拨 |  | 60d | 2026-08-24 | 2026-11-13 |  |
| 11 | 2.1.2 | 波峰焊治具 |  | 1d | 2026-08-24 | 2026-08-24 |  |
| 12 | 2.1.3 | PCB元器件避让 |  | 1d | 2026-08-24 | 2026-08-24 |  |
| 13 | 2.2 | **Plan B: 回流焊验证** |  | 1d | 2026-08-24 | 2026-08-24 |  |
| 14 | 2.2.1 | B.1 PCB/电解电容/DCmodule物资调拨 |  | 1d | 2026-08-24 | 2026-08-24 |  |
| 15 | 2.2.2 | B.1 扩大钢网开孔 |  | 1d | 2026-08-24 | 2026-08-24 |  |

Notes:
- 3: 无效果，锡在PTH孔外融化
- 4: 小锡炉放置区域无380V供电
